# Linux-HA project

Schedule from Planner, 2005-01-16 to 2005-10-03.
Linux-HA

## Calendars

- Default: Mon-Fri 08:00-12:00, 13:00-17:00; Sat-Sun off.

## Resources

| Resource | Group |
| --- | --- |
| Lars Ellenberg | SUSE |
| Alan Robertson | IBM.US |
| Guochun Shi | NCSA |
| Sun, Jiang Dong | IBM.CN |
| Huang, Zhen | IBM.CN |
| Zhao, Kai | IBM.CN |
| Dave Blaschke | IBM.US |
| Lars Marowsky-Bree | SUSE |
| Andrew Beekhof | SUSE |

## Schedule

| ID | WBS | Task | Type | Duration | Start | Finish | Predecessors | Complete | Constraint | Resources | Work |
| --- | --- | --- | --- | --- | --- | --- | --- | --- | --- | --- | --- |
| 1 | 1 | **2.0.0 release** |  |  | 2005-01-16 | 2005-03-07 |  |  |  |  | 288h |
| 2 | 1.1 | 2.0.0 test preparation |  | 5d | 2005-01-16 | 2005-01-25 |  |  |  | Alan Robertson [60%] | 24h |
| 3 | 1.2 | 2.0.0 testing |  | 15d | 2005-01-25 | 2005-03-01 | 2, 26SS+10h |  |  | Alan Robertson [33%] | 40h |
| 4 | 1.3 | 2.0.0 release process |  |  | 2005-03-01 | 2005-03-07 | 3 |  |  | Alan Robertson | 16h |
| 5 | 1.4 | 2.0.0 release | milestone | 0d | 2005-03-07 | 2005-03-07 | 4 |  |  |  |  |
| 6 | 2 | **2.0.1 release** |  |  | 2005-03-07 | 2005-04-18 | 1FS+1h |  | start no earlier than 2005-02-22 |  | 240h |
| 7 | 2.1 | 2.0.1 receive feedback, fix bugs from 2.0.0 |  | 15d | 2005-03-07 | 2005-03-28 |  |  |  |  |  |
| 8 | 2.2 | 2.0.1 test preparation |  |  | 2005-03-28 | 2005-03-29 | 7 |  |  |  | 8h |
| 9 | 2.3 | 2.0.1 testing |  |  | 2005-03-29 | 2005-04-12 | 8 |  |  |  | 80h |
| 10 | 2.4 | 2.0.1 release process |  |  | 2005-04-12 | 2005-04-18 | 9 |  |  | Alan Robertson | 16h |
| 11 | 2.5 | 2.0.1 release | milestone | 0d | 2005-04-18 | 2005-04-18 | 10 |  |  |  |  |
| 12 | 3 | **2.0.2 release** |  |  | 2005-04-18 | 2005-06-14 | 6FS+1h |  | start no earlier than 2005-01-18 |  | 328h |
| 13 | 3.1 | 2.0.2 receive feedback, fix bugs from 2.0.1 |  | 20d | 2005-04-18 | 2005-05-16 |  |  |  |  |  |
| 14 | 3.2 | 2.0.2 test preparation |  |  | 2005-05-16 | 2005-05-18 | 13 |  |  |  | 16h |
| 15 | 3.3 | 2.0.2 testing |  | 15d | 2005-05-18 | 2005-06-08 | 14 |  |  |  | 40h |
| 16 | 3.4 | 2.0.2 release process |  | 2d | 2005-06-08 | 2005-06-14 | 15 |  |  | Alan Robertson | 16h |
| 17 | 3.5 | 2.0.2 release | milestone | 0d | 2005-06-14 | 2005-06-14 | 16 |  |  |  |  |
| 18 | 4 | **2.0.3 release** |  |  | 2005-06-14 | 2005-10-03 |  |  |  |  | 632h |
| 19 | 4.1 | 2.0.3 receive feedback, fix bugs from 2.0.2 |  | 60d | 2005-06-14 | 2005-09-06 | 12 |  |  |  |  |
| 20 | 4.2 | 2.0.3 test preparation |  |  | 2005-09-06 | 2005-09-08 | 19 |  |  |  | 16h |
| 21 | 4.3 | 2.0.3 testing |  |  | 2005-09-08 | 2005-09-29 | 20 |  |  |  | 120h |
| 22 | 4.4 | 2.0.3 release process |  |  | 2005-09-29 | 2005-10-03 | 21 |  |  |  | 16h |
| 23 | 4.5 | 2.0.3 release | milestone | 0d | 2005-10-03 | 2005-10-03 | 22 |  |  |  |  |
| 24 | 5 | 229.19: Community (RH) Cluster Integration |  |  | 2005-01-16 | 2005-02-25 |  |  |  |  | 240h |
| 25 | 6 | 229.20: project leadership, etc. |  | 111d | 2005-01-16 | 2005-09-28 |  | 100% |  | Alan Robertson [20%] | 176h |
| 26 | 7 | 229.23: revised STONITH API |  |  | 2005-01-16 | 2005-02-16 |  |  |  | Sun, Jiang Dong | 120h |
| 27 | 8 | 1039.14: CIM support |  |  | 2005-01-16 | 2005-02-04 |  |  |  |  | 120h |
| 28 | 9 | 1040.04: Internal IBM support |  |  | 2005-01-16 | 2005-02-11 |  |  |  |  | 160h |
| 29 | 10 | 1040.07: Ongoing advocacy |  |  | 2005-01-16 | 2005-02-11 |  |  |  |  | 160h |
| 30 | 11 | 1041.19: Make IPC library thread-safe |  |  | 2005-01-16 | 2005-02-04 |  |  |  |  | 120h |
| 31 | 12 | 1041.21: Make apphbd library thread-safe |  |  | 2005-01-16 | 2005-01-28 |  |  |  |  | 80h |
| 32 | 13 | 1041.22: Make hbclient library thread-safe |  |  | 2005-01-16 | 2005-01-28 |  |  |  |  | 80h |
| 33 | 14 | 1041.24: MontaVista integration work |  |  | 2005-01-16 | 2005-02-04 |  |  |  |  | 120h |
| 34 | 15 | 1041.27: HPI Stonith Support for BladeCenter |  |  | 2005-01-16 | 2005-01-28 |  |  |  |  | 80h |
| 35 | 16 | 1041.28: AIS performance improvements |  |  | 2005-01-16 | 2005-01-17 |  |  |  |  |  |
| 36 | 17 | 1042.10: Certification with IBM storage |  |  | 2005-01-16 | 2005-02-11 |  |  |  |  | 160h |
| 37 | 18 | 1044.09: Create new test cases |  |  | 2005-01-16 | 2005-02-11 |  |  |  |  | 160h |
| 38 | 19 | 1044.11: Create certification process |  |  | 2005-01-16 | 2005-02-04 |  |  |  |  | 120h |
| 39 | 20 | 1042.06: (DONE) DRBD/DB2 performance testing |  |  | 2005-01-16 | 2005-01-17 |  |  |  |  |  |
| 40 | 21 | 1041.23: ?Make SAF libraries thread-safe |  |  | 2005-01-16 | 2005-02-11 |  |  |  |  | 160h |
| 41 | 22 | 1040.06: !Move web site to new format |  |  | 2005-01-16 | 2005-01-28 |  |  |  |  | 80h |
| 42 | 23 | 1044.08: ?Merge two test tools |  |  | 2005-01-16 | 2005-01-28 |  |  |  |  | 80h |
| 43 | 24 | 229.21: ?Internationalization |  |  | 2005-01-16 | 2005-02-11 |  |  |  |  | 160h |
| 44 | 25 | 1041.25: ?TIPC Integration |  |  | 2005-01-16 | 2005-02-04 |  |  |  |  | 120h |
| 45 | 26 | 1044.09: ?Creation of new test cases |  |  | 2005-01-16 | 2005-02-11 |  |  |  |  | 160h |
| 46 | 27 | 1044.10: ?Fully automated nightly tests |  |  | 2005-01-16 | 2005-02-04 |  |  |  |  | 120h |

Notes:
- 25: Ongoing...
- 33: Tue 18 Jan 2005, 21:45 This item is now VERY important.
- 35: Tue 18 Jan 2005, 21:44 This item has now probably become work to improve OpenAIS. But, we hadn't allocated any staff to it :-).
- 40: This is likely to translate into integration with OpenAIS, and contributing to it.
- 41: Tue 18 Jan 2005, 21:54 - Some community resources have been identified who will do this.
- 43: Tue 18 Jan 2005, 21:39: / Probably won't get done. / The customer we were doing this for/with has backed out.
- 44: Tue 18 Jan 2005, 21:42 This may no longer make much sense, since we probably won't be doing major heartbeat-communication-based work.
